# Projeto Algar · BCAPI / BC Billing

Schedule from MS Project XML, 2026-10-05 to 2026-11-13, A marks actual dates.
Binário Cloud

## Calendars

- Padrão Brasil: Mon-Fri 08:00-12:00, 13:00-17:00; Sat-Sun off. Exceptions (off unless hours are given): 2026-10-12, 2026-11-02.

## Resources

| Resource |
| --- |
| Não atribuído |
| Binário Cloud |
| Algar |

## Schedule

| ID | WBS | Task | Duration | Start | Finish | Complete | Constraint | Resources | Responsável (empresa) | Status no painel |
| --- | --- | --- | --- | --- | --- | --- | --- | --- | --- | --- |
| 1 | 1 | **Marco 0 — Kickoff** | 22d | 2026-10-06 | 2026-11-06 | 93% |  |  |  |  |
| 2 | 1.1 | Publicar painel e liberar usuarios para acompanhamento | 8d | 2026-10-06 A | 2026-10-16 A | 100% | start no earlier than 2026-10-06 | Binário Cloud | Binário | Concluído |
| 3 | 1.2 | Definir pontos focais e cadência de acompanhamento | 2d | 2026-10-07 A | 2026-10-08 A | 100% | start no earlier than 2026-10-07 | Binário Cloud | Binário | Concluído |
| 4 | 1.3 | Reunião de Kickoff 08/10 - 16h | 2d | 2026-10-07 A | 2026-10-08 A | 100% | start no earlier than 2026-10-07 | Binário Cloud | Binário | Concluído |
| 5 | 1.4 | Validação de Marcos, responsáveis e datas | 7d | 2026-10-07 A | 2026-10-16 A | 100% | start no earlier than 2026-10-07 | Binário Cloud | Binário | Concluído |
| 6 | 1.5 | Elaboração da TAP | 6d | 2026-10-08 A | 2026-10-16 A | 100% | start no earlier than 2026-10-08 | Binário Cloud | Binário | Concluído |
| 7 | 1.6 | Envio/Assinatura da TAP | 7d | 2026-10-15 A | 2026-10-23 A | 100% | start no earlier than 2026-10-15 | Binário Cloud; Algar | Binário + Algar | Concluído |
| 8 | 1.7 | Negociação minuta contratual Binario x Algar | 15d | 2026-10-16 A | 2026-11-06 | 50% | start no earlier than 2026-10-16 | Binário Cloud; Algar | Binário + Algar | Em andamento |
| 9 | 2 | **Marco 1 — Fase 1 — SSO / Identity Hub / Portal B2B** | 28d | 2026-10-05 | 2026-11-13 | 56% |  |  |  |  |
| 10 | 2.1 | Concluir a configuração de OpenID Connect, Keycloak e Keystone e trocar o acesso de sandbox pelo fluxo produtivo | 21d | 2026-10-05 | 2026-11-04 |  | start no earlier than 2026-10-05 | Binário Cloud; Algar | Binário + Algar | Bloqueada |
| 11 | 2.2 | Envio JWT | 6d | 2026-10-15 A | 2026-10-22 A | 100% | start no earlier than 2026-10-15 | Algar | Algar | Concluído |
| 12 | 2.3 | Envio de credenciais de produção | 3d | 2026-10-16 A | 2026-10-20 A | 100% | start no earlier than 2026-10-16 | Algar | Algar | Concluído |
| 13 | 2.4 | Disponibilizar usuários de serviço das regiões produtivas | 9d | 2026-10-22 A | 2026-11-04 | 25% | start no earlier than 2026-10-22 | Algar | Algar | Aguardando retorno |
| 14 | 2.5 | Incluir a URL do BCP no trusted dashboard da federação do Keystone (stage SP) para validar o SSO | 7d | 2026-10-07 A | 2026-10-16 A | 100% | start no earlier than 2026-10-07 | Binário Cloud; Algar | Binário + Algar | Concluído |
| 15 | 2.6 | Configurar Identity Provider e o mapping no Keystone | 13d | 2026-10-16 A | 2026-11-04 | 50% | start no earlier than 2026-10-16 | Algar | Algar | Em andamento |
| 16 | 2.7 | Validar SSO em ambiente produtivo/região integrada | 3d | 2026-11-04 A | 2026-11-06 | 50% | start no earlier than 2026-11-04 | Binário Cloud | Binário | Em andamento |
| 17 | 2.8 | Validar cenários de segurança do SSO | 3d | 2026-11-04 A | 2026-11-06 | 50% | start no earlier than 2026-11-04 | Binário Cloud | Binário | Em andamento |
| 18 | 2.9 | Consolidar a federação do Keystone nos templates do director | 21d | 2026-10-13 A | 2026-11-11 | 50% | start no earlier than 2026-10-13 | Algar | Algar | Em andamento |
| 19 | 2.10 | Provisionamento 2 VMs para produção | 3d | 2026-10-19 A | 2026-10-21 A | 100% | start no earlier than 2026-10-19 | Algar | Algar | Concluído |
| 20 | 2.11 | Ajustes da nomeclatura dos hosts | 3d | 2026-10-22 A | 2026-10-26 A | 100% | start no earlier than 2026-10-22 | Algar | Algar | Concluído |
| 21 | 2.12 | Ajustes Mesa TI | 10d | 2026-10-30 A | 2026-11-13 | 50% | start no earlier than 2026-10-30 | Binário Cloud | Binário | Em andamento |
| 22 | 2.13 | Definir fluxo de autenticação do Mesa TI via Blazon | 8d | 2026-10-22 A | 2026-11-03 | 50% | start no earlier than 2026-10-22 | Algar | Algar | Em andamento |
| 23 | 2.14 | Liberar acesso dos usuários do Mesa TI | 12d | 2026-10-22 A | 2026-11-09 | 10% | start no earlier than 2026-10-22 | Binário Cloud | Binário | Planejamento |
| 24 | 2.15 | Documentar e alinhar virada para produção | 3d | 2026-11-11 | 2026-11-13 |  | start no earlier than 2026-11-11 | Binário Cloud | Binário | Não iniciado |

Notes:
- 2: Responsável: Binário · Diogo Lerison / Status no painel: Concluído / Origem: atividade definida no planejamento / Responsável (pessoa): Diogo Lerison
- 3: Responsável: Binário · Diogo Lerison / Status no painel: Concluído / Origem: atividade definida no planejamento / Responsável (pessoa): Diogo Lerison
- 4: Responsável: Binário · Diogo Lerison / Status no painel: Concluído / Origem: atividade definida no planejamento / Responsável (pessoa): Diogo Lerison
- 5: Responsável: Binário · Diogo Lerison / Status no painel: Concluído / Origem: atividade definida no planejamento / Responsável (pessoa): Diogo Lerison
- 6: Responsável: Binário · Diogo Lerison / Status no painel: Concluído / Origem: atividade definida no planejamento / Responsável (pessoa): Diogo Lerison
- 7: Responsável: Binário + Algar · Diogo Lerison / Algar / Status no painel: Concluído / Origem: atividade definida no planejamento / Responsável (pessoa): Diogo Lerison / Algar
- 8: Responsável: Binário + Algar · Diogo Lerison / Emerson Alexandre, Julis Rimet e Flavio Janones / Status no painel: Em andamento / Origem: atividade definida no planejamento / Comentário: Aguardando retorno Emerson / Julis / Produtos · Responsável: Emerson Alexandre, Julis Rimet e Flavio Janones / Responsável (pessoa): Diogo Lerison / Emerson Alexandre, Julis Rimet e Flavio Janones
- 10: Responsável: Binário + Algar · Diogo Lerison / Daniel Prado e Luiz Gustavo / Status no painel: Bloqueada / Origem: atividade definida no planejamento / Comentário: Habilitar autenticação SSO e substituir o acesso de sandbox pelo fluxo produtivo. · Responsável: Daniel Prado e Luiz Gustavo / Responsável (pessoa): Diogo Lerison / Daniel Prado e Luiz Gustavo
- 11: Responsável: Algar · Luiz Gustavo / Status no painel: Concluído / Origem: atividade definida no planejamento / Comentário: Responsáveil: Luiz Gustavo / Responsável (pessoa): Luiz Gustavo
- 12: Responsável: Algar · Luiz Gustavo / Status no painel: Concluído / Origem: atividade definida no planejamento / Comentário: Responsáveil: Luiz Gustavo / Responsável (pessoa): Luiz Gustavo
- 13: Responsável: Algar · Daniel ou Glauberson / Status no painel: Aguardando retorno / Origem: atividade definida no planejamento / Comentário: Responsáveis: Daniel ou Glauberson Fortaleza já avançou; manter aberto somente o que falta para Porto Alegre e demais regiões necessárias. / Responsável (pessoa): Daniel ou Glauberson
- 14: Responsável: Binário + Algar · Diogo Lerison / Daniel Prado / Status no painel: Concluído / Origem: atividade definida no planejamento / Comentário: trusted_dashboard = · Responsável: Daniel Prado / Responsável (pessoa): Diogo Lerison / Daniel Prado
- 15: Responsável: Algar · Daniel Prado / Status no painel: Em andamento / Origem: atividade definida no planejamento / Comentário: ja realizado nas novas regiões Necessario ajuste em SP e Uberlandia, Responsável: Daniel Prado Consolidar IdP, mapping de grupos/projetos/roles e preparar o fluxo para validação produtiva. / Responsável (pessoa): Daniel Prado
- 16: Responsável: Binário · Joab de Araújo Silva / Status no painel: Em andamento / Origem: atividade definida no planejamento / Comentário: O sandbox já deixou de ser o foco. O teste deve validar login, JWT, projetos e roles em região já integrada ao Identity Hub. / Responsável (pessoa): Joab de Araújo Silva
- 17: Responsável: Binário · Joab de Araújo Silva / Status no painel: Em andamento / Origem: atividade definida no planejamento / Comentário: estar MFA, expiração de token, remoção de usuário e perda de permissões. / Responsável (pessoa): Joab de Araújo Silva
- 18: Responsável: Algar · Glauberson / Status no painel: Em andamento / Origem: atividade definida no planejamento / Comentário: Responsável: Glauberson Aplicar de forma persistente a configuração da federação antes da change produtiva. / Responsável (pessoa): Glauberson
- 19: Responsável: Algar · Glauberson / Status no painel: Concluído / Origem: atividade definida no planejamento / Comentário: Responsável: Glauberson A configuração definida para cada uma das duas novas VMs é: 16 vCPU 32 GB de RAM 500 GB de disco LVM, mantendo espaço livre para expansão futura Instalação limpa, sem clone da POC / Responsável (pessoa): Glauberson
- 20: Responsável: Algar · Glauberson / Status no painel: Concluído / Origem: atividade definida no planejamento / Comentário: Responsável: Glauberson / Responsável (pessoa): Glauberson
- 21: Responsável: Binário · Guilherme Lopes / Tiago Gomes de Oliveira / Status no painel: Em andamento / Origem: atividade definida no planejamento / Responsável (pessoa): Guilherme Lopes / Tiago Gomes de Oliveira
- 22: Responsável: Algar · Julis / Status no painel: Em andamento / Origem: atividade definida no planejamento / Comentário: Responsável: Julis · Depende do retorno da Vanessa e do alinhamento técnico com o time Blazon. · Definido pelo cliente, autenticação é feita pelo Microsoft, Mas o usuario utiliza o Plataforma Blazon Necessário assinatura e documentação de autenticação. Julis vai verificar com o fornecedor segunda feira / Responsável (pessoa): Julis
- 23: Responsável: Binário · Guilherme Lopes / Status no painel: Planejamento / Origem: atividade definida no planejamento / Comentário: Executar após definição do fluxo de autenticação. / Responsável (pessoa): Guilherme Lopes
- 24: Responsável: Binário · Joab de Araújo Silva / Diogo Lerison / Status no painel: Não iniciado / Origem: atividade definida no planejamento / Comentário: Registrar plano, rollback, janela e responsáveis antes da mudança definitiva. / Responsável (pessoa): Joab de Araújo Silva / Diogo Lerison

| ID | WBS | Task | Duration | Start | Finish | Complete | Constraint | Resources | Responsável (empresa) | Status no painel |
| --- | --- | --- | --- | --- | --- | --- | --- | --- | --- | --- |
| 25 | 3 | **Marco 2 — Redirect do BCP API para o Portal B2B** | 26d | 2026-10-07 | 2026-11-13 | 40% |  |  |  |  |
| 26 | 3.1 | Confirmar o sistema de destino | 3d | 2026-10-07 A | 2026-10-09 A | 100% | start no earlier than 2026-10-07 | Binário Cloud; Algar | Binário + Algar | Concluído |
| 27 | 3.2 | Publicar e validar acesso HTTPS/443 do BCP em produção | 25d | 2026-10-07 | 2026-11-12 |  | start no earlier than 2026-10-07 | Algar | Algar | Não iniciado |
| 28 | 3.3 | Exibir botão de custo apenas para perfil financeiro do Cloud Plus | 5d | 2026-10-15 A | 2026-10-21 A | 100% | start no earlier than 2026-10-15 | Binário Cloud | Binário | Concluído |
| 29 | 3.4 | Validar fluxo Portal B2B → SSO → BCP em produção | 13d | 2026-10-27 | 2026-11-13 |  | start no earlier than 2026-10-27 | Binário Cloud | Binário | Não iniciado |
| 30 | 3.5 | Configurar redirect do Portal B2B para o BCP em produção | 10d | 2026-10-29 | 2026-11-12 |  | start no earlier than 2026-10-29 | Algar | Algar | Não iniciado |
| 31 | 4 | **Marco 3 — API e SKU e Flavors** | 24d | 2026-10-07 | 2026-11-11 | 50% |  |  |  |  |
| 32 | 4.1 | Envio do Link da documentação | 7d | 2026-10-07 A | 2026-10-16 A | 100% | start no earlier than 2026-10-07 | Binário Cloud | Binário | Concluído |
| 33 | 4.2 | Validar requisitos de SKU, Flavor e precificação | 6d | 2026-10-08 A | 2026-10-16 A | 100% | start no earlier than 2026-10-08 | Binário Cloud | Binário | Concluído |
| 34 | 4.3 | Concluir adequação dos endpoints de SKU e Flavor | 12d | 2026-10-21 A | 2026-11-06 | 50% | start no earlier than 2026-10-21 | Binário Cloud | Binário | Em andamento |
| 35 | 4.4 | Testar e publicar APIs de SKU e Flavor | 9d | 2026-10-27 | 2026-11-09 |  | start no earlier than 2026-10-27 | Binário Cloud | Binário | Não iniciado |
| 36 | 4.5 | Homologar APIs de SKU e Flavor com a Algar | 9d | 2026-10-29 | 2026-11-11 |  | start no earlier than 2026-10-29 | Binário Cloud; Algar | Binário + Algar | Não iniciado |
| 37 | 5 | **Marco 4 — Novas regiões / Coleta / Billing** | 28d | 2026-10-05 | 2026-11-13 | 25% |  |  |  |  |
| 38 | 5.1 | Ajuste de casas decimais | 8d | 2026-10-05 A | 2026-10-15 A | 100% | start no earlier than 2026-10-05 | Binário Cloud | Binário | Concluído |
| 39 | 5.2 | Enviar as diretrizes de dimensionamento | 3d | 2026-10-07 A | 2026-10-09 A | 100% | start no earlier than 2026-10-07 | Binário Cloud | Binário | Concluído |
| 40 | 5.3 | Validar regras de cobrança das novas regiões | 24d | 2026-10-07 | 2026-11-11 |  | start no earlier than 2026-10-07 | Algar | Algar | Não iniciado |
| 41 | 5.4 | Ajustar as VMs da POC para produção (nomes, rede, recursos e isolamento dos serviços) | 9d | 2026-10-13 A | 2026-10-23 A | 100% | start no earlier than 2026-10-13 | Algar | Algar | Concluído |
| 42 | 5.5 | Definir publicação e acesso da calculadora de consumo | 22d | 2026-10-13 | 2026-11-12 |  | start no earlier than 2026-10-13 | Binário Cloud | Binário | Não iniciado |
| 43 | 5.6 | Validar certificado e HTTPS do ambiente produtivo | 16d | 2026-10-15 | 2026-11-06 |  | start no earlier than 2026-10-15 | Algar | Algar | Não iniciado |
| 44 | 5.7 | Criar o seletor de região no painel de consumo | 6d | 2026-10-19 A | 2026-10-26 A | 100% | start no earlier than 2026-10-19 | Binário Cloud | Binário | Concluído |
| 45 | 5.8 | Liberar firewall e acesso externo conforme domínio e local de hospedagem | 12d | 2026-10-21 | 2026-11-06 |  | start no earlier than 2026-10-21 | Algar | Algar | Não iniciado |
| 46 | 5.9 | Começar coleta Porto Alegre | 16d | 2026-10-22 | 2026-11-13 |  | start no earlier than 2026-10-22 | Binário Cloud | Binário | Não iniciado |
| 47 | 5.10 | Deploy + Validação | 16d | 2026-10-22 | 2026-11-13 |  | start no earlier than 2026-10-22 | Binário Cloud | Binário | Não iniciado |
| 48 | 5.11 | Começar coleta Fortaleza | 16d | 2026-10-22 | 2026-11-13 |  | start no earlier than 2026-10-22 | Binário Cloud | Binário | Não iniciado |
| 49 | 5.12 | Deploy + Validação | 16d | 2026-10-22 | 2026-11-13 |  | start no earlier than 2026-10-22 | Binário Cloud | Binário | Não iniciado |
| 50 | 5.13 | Liberar acesso externo ao MySQL para a BC Data API | 4d | 2026-10-29 A | 2026-11-04 | 50% | start no earlier than 2026-10-29 | Algar | Algar | Em andamento |
| 51 | 5.14 | Apresentar calculadora ao time do Portal | 6d | 2026-10-29 | 2026-11-06 |  | start no earlier than 2026-10-29 | Binário Cloud | Binário | Não iniciado |
| 52 | 5.15 | Validar acessos e endpoints das regiões Canonical | 3d | 2026-10-30 A | 2026-11-04 | 50% | start no earlier than 2026-10-30 | Binário Cloud; Algar | Binário + Algar | Em andamento |
| 53 | 5.16 | Validar endpoint São Paulo DR; | 3d | 2026-10-30 | 2026-11-04 |  | start no earlier than 2026-10-30 | Binário Cloud | Binário | Não iniciado |
| 54 | 5.17 | Validar endpoint São Paulo; | 3d | 2026-10-30 | 2026-11-04 |  | start no earlier than 2026-10-30 | Binário Cloud | Binário | Não iniciado |
| 55 | 5.18 | Validar Endpoint Porto Alegre; | 3d | 2026-10-30 | 2026-11-04 |  | start no earlier than 2026-10-30 | Binário Cloud | Binário | Não iniciado |
| 56 | 5.19 | Validar endpoint Fortaleza; | 3d | 2026-10-30 | 2026-11-04 |  | start no earlier than 2026-10-30 | Binário Cloud | Binário | Não iniciado |
| 57 | 5.20 | Validar conectividade BC Data API → MySQL | 3d | 2026-11-04 | 2026-11-06 |  | start no earlier than 2026-11-04 | Binário Cloud | Binário | Não iniciado |

Notes:
- 26: Responsável: Binário + Algar · Diogo Lerison / Algar / Status no painel: Concluído / Origem: atividade definida no planejamento / Comentário: sandbox --> https://sandbox-billing.cloudalgar.com.br/api/openstack/skyline/api/v1/sso/go produção --> https://consumo.cloudalgar.com.br/api/openstack/skyline/api/v1/sso/go Definir o novo nome , confirmar se consumo.cloudalgar.... Confirmar o sistema de destino: billing.cloudalgar.com.br (visão do cliente), não o Mesa de TI / Responsável (pessoa): Diogo Lerison / Algar
- 27: Responsável: Algar · Algar / Status no painel: Não iniciado / Origem: atividade definida no planejamento / Comentário: Responsável: Algar Infraestrutura, VIP e DNS já foram disponibilizados; falta validar o acesso produtivo e certificado. / Responsável (pessoa): Algar
- 28: Responsável: Binário · Diogo Lerison / Status no painel: Concluído / Origem: atividade definida no planejamento / Comentário: Role Financeiro existente. / Responsável (pessoa): Diogo Lerison
- 29: Responsável: Binário · Diogo Lerison / Joab de Araújo Silva / Status no painel: Não iniciado / Origem: atividade definida no planejamento / Comentário: Validar redirect, autenticação, role financeiro, projetos e acesso ao painel de consumo. / Responsável (pessoa): Diogo Lerison / Joab de Araújo Silva
- 30: Responsável: Algar · Algar / Status no painel: Não iniciado / Origem: atividade definida no planejamento / Comentário: Responsável: Algar Deve ocorrer após a validação do SSO produtivo e da migração para o Identity Hub. / Responsável (pessoa): Algar
- 32: Responsável: Binário · Guilherme Lopes / Diogo Lerison / Status no painel: Concluído / Origem: atividade definida no planejamento / Comentário: Enviar o link para o time Algar (endpoints da API de SKUs e flavors) Tabela 17 já existente / Responsável (pessoa): Guilherme Lopes / Diogo Lerison
- 33: Responsável: Binário · Guilherme Lopes / Status no painel: Concluído / Origem: atividade definida no planejamento / Comentário: Consolidar com a Algar se os campos, preços, SKUs e flavors retornados atendem ao formato necessário. / Responsável (pessoa): Guilherme Lopes
- 34: Responsável: Binário · Guilherme Lopes / Status no painel: Em andamento / Origem: atividade definida no planejamento / Comentário: Finalizar eventuais ajustes de payload e transformação identificados durante a validação. / Responsável (pessoa): Guilherme Lopes
- 35: Responsável: Binário · Guilherme Lopes / Status no painel: Não iniciado / Origem: atividade definida no planejamento / Comentário: Executar testes integrados, publicar a versão ajustada e atualizar a documentação técnica. / Responsável (pessoa): Guilherme Lopes
- 36: Responsável: Binário + Algar · Diogo Lerison / Guilherme Lopes / Joab de Araújo Silva / Algar / Status no painel: Não iniciado / Origem: atividade definida no planejamento / Comentário: Algar valida os retornos e confirma aceite funcional dos endpoints. / Responsável (pessoa): Diogo Lerison / Guilherme Lopes / Joab de Araújo Silva / Algar
- 38: Responsável: Binário · Guilherme Soares / Status no painel: Concluído / Origem: atividade definida no planejamento / Comentário: Deploy concluído: precisão de 6 casas decimais Os preços de SKU, os valores de consumo (on demand e mensal) e o total da fatura passaram a ser calculados e gravados com 6 casas decimais. / Responsável (pessoa): Guilherme Soares
- 39: Responsável: Binário · Joab de Araújo Silva / Guilherme Lopes / Guilherme Soares / Status no painel: Concluído / Origem: atividade definida no planejamento / Comentário: (CPU, memória, disco, redundância) 3 de produção, servidor atual utilizado para POC será usado para teste IP privado para configuração do VIP Flavor 8-32 volume: 500Gb Possibilidade de alto uso de disco ser os logs do Gitlab / Responsável (pessoa): Joab de Araújo Silva / Guilherme Lopes / Guilherme Soares
- 40: Responsável: Algar · Algar (a definir) / Status no painel: Não iniciado / Origem: atividade definida no planejamento / Comentário: Validar critérios de cobrança, sobreuso, roteador/projeto e banda para as novas regiões e identificar eventual necessidade de ajuste contratual. / Responsável (pessoa): Algar (a definir)
- 41: Responsável: Algar · Algar (a definir) / Status no painel: Concluído / Origem: atividade definida no planejamento / Responsável (pessoa): Algar (a definir)
- 42: Responsável: Binário · Guilherme Lopes / Status no painel: Não iniciado / Origem: atividade definida no planejamento / Comentário: Definir com o time do Portal como a calculadora será disponibilizada, considerando acesso interno, VPN ou integração com o Portal B2B. / Responsável (pessoa): Guilherme Lopes
- 43: Responsável: Algar · Algar (a definir) / Status no painel: Não iniciado / Origem: atividade definida no planejamento / Comentário: Confirmar certificado, cadeia, domínio e acesso HTTPS do ambiente produtivo após a definição definitiva de VIP e DNS. / Responsável (pessoa): Algar (a definir)
- 44: Responsável: Binário · Joab de Araújo Silva / Status no painel: Concluído / Origem: atividade definida no planejamento / Responsável (pessoa): Joab de Araújo Silva
- 45: Responsável: Algar · Algar (a definir) / Status no painel: Não iniciado / Origem: atividade definida no planejamento / Comentário: Confirmar regras de firewall, NAT, porta 443 e acessibilidade externa do endereço produtivo. / Responsável (pessoa): Algar (a definir)
- 46: Responsável: Binário · Guilherme Soares / Status no painel: Não iniciado / Origem: atividade definida no planejamento / Responsável (pessoa): Guilherme Soares
- 47: Responsável: Binário · Guilherme Soares / Status no painel: Não iniciado / Origem: atividade definida no planejamento / Responsável (pessoa): Guilherme Soares
- 48: Responsável: Binário · Guilherme Soares / Status no painel: Não iniciado / Origem: atividade definida no planejamento / Responsável (pessoa): Guilherme Soares
- 49: Responsável: Binário · Guilherme Soares / Status no painel: Não iniciado / Origem: atividade definida no planejamento / Responsável (pessoa): Guilherme Soares
- 50: Responsável: Algar · Daniel Lima / Status no painel: Em andamento / Origem: atividade definida no planejamento / Comentário: Responsãvel: Daniel Lima Disponibilizar conectividade externa ao banco MySQL gerenciado pela Canonical para permitir acesso da BC Data API. O usuário e as permissões nas tabelas já foram criados; permanece pendente a exposição do endpoint/rede. / Responsável (pessoa): Daniel Lima
- 51: Responsável: Binário · Diogo Lerison / Tiago Gomes de Oliveira / Status no painel: Não iniciado / Origem: atividade definida no planejamento / Responsável (pessoa): Diogo Lerison / Tiago Gomes de Oliveira
- 52: Responsável: Binário + Algar · Joab de Araújo Silva / Daniel Lima / Status no painel: Em andamento / Origem: atividade definida no planejamento / Comentário: Responsável: Daniel Lima Validar acesso via Horizon/API aos endpoints disponibilizados para Nordeste, Sul, São Paulo DR e São Paulo Staging. / Responsável (pessoa): Joab de Araújo Silva / Daniel Lima
- 53: Responsável: Binário · Joab de Araújo Silva / Status no painel: Não iniciado / Origem: atividade definida no planejamento / Comentário: cloudplus.sp.cloudalgar.com.br / Responsável (pessoa): Joab de Araújo Silva
- 54: Responsável: Binário · Joab de Araújo Silva / Status no painel: Não iniciado / Origem: atividade definida no planejamento / Comentário: cloudplus.stg.sp.cloudalgar.com.br / Responsável (pessoa): Joab de Araújo Silva
- 55: Responsável: Binário · Joab de Araújo Silva / Status no painel: Não iniciado / Origem: atividade definida no planejamento / Comentário: cloudplus.sul.cloudalgar.com.br / Responsável (pessoa): Joab de Araújo Silva
- 56: Responsável: Binário · Joab de Araújo Silva / Status no painel: Não iniciado / Origem: atividade definida no planejamento / Comentário: cloudplus.ne.cloudalgar.com.br / Responsável (pessoa): Joab de Araújo Silva
- 57: Responsável: Binário · Guilherme Soares / Status no painel: Não iniciado / Origem: atividade definida no planejamento / Comentário: Testar autenticação, rota de rede, endpoint, porta e acesso às tabelas necessárias após a liberação da Canonical. / Responsável (pessoa): Guilherme Soares
